# Cronograma Matricula Medicina

Schedule from MS Project, 2019-04-17 to 2019-06-03, A marks actual dates.

## Calendars

- Padrão: Mon-Fri 09:00-12:00, 13:00-18:00; Sat-Sun off. Exceptions (off unless hours are given): 2019-05-01 (Dia do trabalho, recurring).

## Resources

| Resource |
| --- |
| Ana Paula |
| Ana Paula, Juliano |
| Josane, Juliano |

## Schedule

| ID | WBS | Task | Type | Duration | Start | Finish | Complete | Remaining | Total slack | Work |
| --- | --- | --- | --- | --- | --- | --- | --- | --- | --- | --- |
| 1 | 1 | **Matricula 15** |  | 33d? | 2019-04-17 09:00 A | 2019-06-03 18:00 | 23% | 25.49d? | 0d | 72h |
| 2 | 1.1 | **Gerenciamento do Projeto/Reuniões** |  | 19.5d | 2019-04-17 09:00 A | 2019-05-15 14:00 | 92% | 1.5d | 0d |  |
| 3 | 1.1.1 | Reunião: Abertura do projeto/Mapeamento de melhorias | manual | 4h | 2019-04-17 09:00 A | 2019-04-17 14:00 A | 100% |  |  |  |
| 4 | 1.1.2 | Produto: Estrutura do Projeto | manual | 16h | 2019-04-18 09:00 A | 2019-04-19 18:00 A | 100% |  |  |  |
| 5 | 1.1.3 | Produto: Pacotes de trabalho | manual | 16h | 2019-04-22 09:00 A | 2019-04-23 18:00 A | 100% |  |  |  |
| 6 | 1.1.4 | Reunião: Refinamento de pacotes | manual | 4h | 2019-04-24 09:00 A | 2019-04-24 14:00 A | 100% |  |  |  |
| 7 | 1.1.5 | Reunião: Planejamento de capacidade | manual | 4h | 2019-05-02 09:00 A | 2019-05-02 14:00 A | 100% |  |  |  |
| 8 | 1.1.6 | Reunião: Semestralização dos alunos | manual | 4h | 2019-05-08 09:00 A | 2019-05-08 14:00 A | 100% |  |  |  |
| 9 | 1.1.7 | Reunião: Cronograma Geral | manual | 4h | 2019-05-15 09:00 | 2019-05-15 14:00 |  |  |  |  |
| 10 | 1.2 | **Suporte de TI** |  | 1d? | 2019-04-17 09:00 A | 2019-04-17 18:00 | 41% | 0.59d? |  |  |
| 11 | 1.2.1 | Levantamento de implementações para matrícula | manual | 36h | 2019-05-07 09:00 A | 2019-05-13 14:00 A | 100% |  |  |  |
| 12 | 1.2.2 | Relatório de avaliação de semestralização | manual | 24h | 2019-05-03 09:00 A | 2019-05-07 18:00 A | 100% |  |  |  |
| 13 | 1.2.3 | Relatório de avaliação de notas | manual | 1d? | 2019-04-17 09:00 | 2019-04-17 18:00 |  |  |  |  |
| 14 | 1.2.4 | Relatório de avaliação de inadimplência | manual | 1d? | 2019-04-17 09:00 | 2019-04-17 18:00 |  |  |  |  |
| 15 | 1.2.5 | Implementações de Pré-matricula | manual | 1d? | 2019-04-17 09:00 | 2019-04-17 18:00 |  |  |  |  |
| 16 | 1.2.6 | Implementações de matrícula financeira | manual | 1d? | 2019-04-17 09:00 | 2019-04-17 18:00 |  |  |  |  |
| 17 | 1.2.7 | Implementações de matrícula acadêmica | manual | 1d? | 2019-04-17 09:00 | 2019-04-17 18:00 |  |  |  |  |
| 18 | 1.2.8 | Especificação de infra - rede e alta disponibilidade | manual | 1d? | 2019-04-17 09:00 | 2019-04-17 18:00 |  |  |  |  |
| 19 | 1.2.9 | Especificação de infra - estações | manual | 1d? | 2019-04-17 09:00 | 2019-04-17 18:00 |  |  |  |  |
| 20 | 1.2.10 | Especificação de infra - máquinas de cheque (R&W) | manual | 1d? | 2019-04-17 09:00 | 2019-04-17 18:00 |  |  |  |  |
| 22 | 1.2.11 | Montagem de equipamentos | manual | 1d? | 2019-04-17 09:00 | 2019-04-17 18:00 |  |  |  |  |
| 23 | 1.2.12 | Autenticação do pagamento online | manual | 1d? | 2019-04-17 09:00 | 2019-04-17 18:00 |  |  |  |  |
| 24 | 1.3 | **Mapeamento dos processos** |  | 6d | 2019-04-30 09:00 A | 2019-05-08 18:00 A | 100% |  |  |  |
| 25 | 1.3.1 | Modelagem de matrícula e re-matrícula, finaceira e acadêmica | manual | 32h | 2019-04-30 09:00 A | 2019-05-06 18:00 A | 100% |  |  |  |
| 26 | 1.3.2 | Processos complementares (fiança, negociação) | manual | 8h | 2019-05-08 09:00 A | 2019-05-08 18:00 A | 100% |  |  |  |

| ID | WBS | Task | Type | Duration | Start | Finish | Complete | Remaining | Resources | Work |
| --- | --- | --- | --- | --- | --- | --- | --- | --- | --- | --- |
| 27 | 1.4 | **Montagem de espaço físico** |  | 14d? | 2019-05-15 09:00 A | 2019-06-03 18:00 | 3% | 13.52d? |  |  |
| 28 | 1.4.1 | **Escolha de local** |  | 1h? | 2019-05-15 09:00 | 2019-05-15 10:00 |  |  |  |  |
| 29 | 1.4.1.1 | Matricula financeira de veteranos | manual | 1d? | 2019-05-15 09:00 | 2019-05-15 18:00 |  |  |  |  |
| 30 | 1.4.1.2 | Matrícula acadêmica de veteranos | manual | 1d? | 2019-05-15 09:00 | 2019-05-15 18:00 |  |  |  |  |
| 31 | 1.4.1.3 | Matrícula acadêmica de calouros | manual | 1d? | 2019-05-15 09:00 | 2019-05-15 18:00 |  |  |  |  |
| 32 | 1.4.1.4 | Pendências financeiras | manual | 1d? | 2019-05-15 09:00 | 2019-05-15 18:00 |  |  |  |  |
| 33 | 1.4.1.5 | Pendências acadêmicas | manual | 1d? | 2019-05-15 09:00 | 2019-05-15 18:00 |  |  |  |  |
| 34 | 1.4.1.6 | Recepção | manual | 1d? | 2019-05-15 09:00 | 2019-05-15 18:00 |  |  |  |  |
| 35 | 1.4.2 | Revisão de estrutura elétrica | manual | 8h | 2019-05-15 09:00 | 2019-05-15 18:00 |  |  |  |  |
| 36 | 1.4.3 | Limpeza e preparação do espaço (somente mobilia) | manual | 8h | 2019-05-15 09:00 | 2019-05-15 18:00 |  |  |  |  |
| 37 | 1.4.4 | Especificação da mobilia, equipamentos e materiais para matrícula | manual | 4h | 2019-05-15 09:00 | 2019-05-15 14:00 |  |  |  |  |
| 38 | 1.4.5 | Definição de fardamento | manual | 16h | 2019-05-15 09:00 | 2019-05-16 18:00 |  |  |  |  |
| 39 | 1.4.6 | Recepção, serviços e opções de conforto | manual | 8h | 2019-05-15 09:00 A | 2019-05-15 18:00 | 50% | 4h |  |  |
| 40 | 1.4.7 | Instalação para matricula | manual | 24h | 2019-05-15 09:00 | 2019-05-17 18:00 |  |  |  |  |
| 41 | 1.5 | **Seleção e capacitação da equipe** |  | 14d? | 2019-05-15 09:00 | 2019-06-03 18:00 |  |  |  | 72h |
| 42 | 1.5.1 | Homologação de matricula financeira presencial (simulação no Lyceum) | manual | 36h | 2019-05-15 09:00 | 2019-05-21 14:00 |  |  | Ana Paula, Juliano | 36h |
| 43 | 1.5.2 | Homologação de matrícula acadêmica presencial (simulação no Lyceum) | manual | 36h | 2019-05-15 09:00 | 2019-05-21 14:00 |  |  | Josane, Juliano | 36h |
| 44 | 1.5.3 | Definição das estratégias de constituição de equipes de matricula | manual | 2h | 2019-05-15 09:00 | 2019-05-15 11:00 |  |  |  |  |
| 45 | 1.5.4 | Seleção e contratação de líderes e responsáveis pelo processo | manual | 2h | 2019-05-15 09:00 | 2019-05-15 11:00 |  |  |  |  |
| 46 | 1.5.5 | Seleção e contratação de equipe de atendimento presencial | manual | 8h | 2019-05-15 09:00 | 2019-05-15 18:00 |  |  |  |  |
| 47 | 1.5.6 | Montagem/Documentação de scripts de atendimento | manual | 4h | 2019-05-15 09:00 | 2019-05-15 14:00 |  |  |  |  |
| 48 | 1.5.7 | Estruturação de turnos de trabalho | manual | 1h | 2019-05-15 09:00 | 2019-05-15 10:00 |  |  |  |  |
| 49 | 1.5.8 | Capacitação - Postura e valores da instituição | manual | 6h | 2019-05-15 09:00 | 2019-05-15 16:00 |  |  |  |  |
| 50 | 1.5.9 | Capacitação - Processos, sistema e equipamentos | manual | 8h | 2019-05-15 09:00 | 2019-05-15 18:00 |  |  |  |  |

| ID | WBS | Task | Type | Duration | Start | Finish | Complete | Remaining |
| --- | --- | --- | --- | --- | --- | --- | --- | --- |
| 51 | 1.6 | **Estratégia de comunição** |  | 14d | 2019-05-15 09:00 | 2019-06-03 18:00 |  |  |
| 52 | 1.6.1 | Elaboração de manual para aluno | manual | 24h | 2019-05-15 09:00 | 2019-05-17 18:00 |  |  |
| 53 | 1.6.2 | Elaboração de manual de treinamento para equipe | manual | 32h | 2019-05-15 09:00 | 2019-05-20 18:00 |  |  |
| 54 | 1.6.3 | Planejamento de mídia | manual | 1d | 2019-05-15 09:00 | 2019-05-15 18:00 |  |  |
| 55 | 1.6.4 | Levantamento pendências | manual | 16h | 2019-05-15 09:00 | 2019-05-16 18:00 |  |  |
| 56 | 1.6.5 | Comunicação de pendências | manual | 1d | 2019-05-15 09:00 | 2019-05-15 18:00 |  |  |
| 57 | 1.6.6 | Levantamento de valores | manual | 1d | 2019-05-15 09:00 | 2019-05-15 18:00 |  |  |
| 58 | 1.6.7 | Comunicação de valores | manual | 1d | 2019-05-15 09:00 | 2019-05-15 18:00 |  |  |
| 59 | 1.6.8 | Plano de comunicação (contatos de responsáveis) | manual | 1d | 2019-05-15 09:00 | 2019-05-15 18:00 |  |  |
| 60 | 1.6.9 | Definição de glossário de termos para a Matrícula | manual | 8h | 2019-05-15 09:00 | 2019-05-15 18:00 |  |  |
| 61 | 1.6.10 | Gravação de video institucional | manual | 1d | 2019-05-15 09:00 | 2019-05-15 18:00 |  |  |
| 62 | 1.7 | **Homologação** |  | 23d | 2019-05-02 09:00 | 2019-06-03 18:00 |  |  |
| 63 | 1.7.1 | Aprovação de novos fluxos | manual | 16h | 2019-05-02 09:00 | 2019-05-03 18:00 |  |  |
| 64 | 1.7.2 | Validação de funcionalidades - sistema | manual | 1d | 2019-05-02 09:00 | 2019-05-02 18:00 |  |  |
| 65 | 1.7.3 | Validação de funcionalidades - portal | manual | 1d | 2019-05-02 09:00 | 2019-05-02 18:00 |  |  |
| 66 | 1.7.4 | Simulação para cada cenário/modalidade de matrícula | manual | 1d | 2019-05-02 09:00 | 2019-05-02 18:00 |  |  |
| 67 | 1.8 | **Planejamento** |  | 6d | 2019-05-08 09:00 A | 2019-05-15 18:00 | 11% | 5.33d |
| 68 | 1.8.1 | Definição do cronograma | manual | 8h | 2019-05-08 09:00 | 2019-05-08 18:00 |  |  |
| 69 | 1.8.2 | Estimativa do contingente de alunos por modalidade | manual | 1h | 2019-05-08 09:00 A | 2019-05-08 10:00 A | 100% |  |
| 70 | 1.8.3 | Dimensionamento da capacidade de atendimento | manual | 1h | 2019-05-08 09:00 A | 2019-05-08 10:00 A | 100% |  |
| 71 | 1.8.4 | Mapa de escalonamento | manual | 1d | 2019-05-08 09:00 | 2019-05-08 18:00 |  |  |
| 72 | 1.9 | **Mobilização de recursos** |  | 14d? | 2019-05-15 09:00 | 2019-06-03 18:00 |  |  |
| 73 | 1.9.1 | Mobilia/facilities | manual | 1d | 2019-05-15 09:00 | 2019-05-15 18:00 |  |  |
| 74 | 1.9.2 | Infra tecnologica | manual | 1d | 2019-05-15 09:00 | 2019-05-15 18:00 |  |  |
| 75 | 1.9.3 | Material de divulgação | manual | 1d | 2019-05-15 09:00 | 2019-05-15 18:00 |  |  |
| 76 | 1.9.4 | Contingência para fornecimento de energia elétrica | manual | 1d? | 2019-05-15 09:00 | 2019-05-15 18:00 |  |  |
